# Practica2

Schedule from MS Project, 2017-02-20 to 2018-03-05, costs in €.

## Calendars

- Copia de Estándar: Mon-Fri 09:00-13:00, 15:00-19:00; Sat-Sun off. Exceptions (off unless hours are given): 2017-02-28 to 2020-02-28 (Día de Andalucía, recurring), 2017-04-13 (Jueves Santo '17), 2017-04-14 (Viernes Santo '17), 2017-05-01 to 2020-05-01 (Día del Trabajo, recurring), 2017-08-15 to 2020-08-15 (Asunción de la Virgen, recurring), 2017-08-19 to 2020-08-19 (Toma de Málaga por los Reyes Católicos, recurring), 2017-09-08 to 2020-09-08 (Virgen de la Victoria, recurring), 2017-10-12 to 2020-10-12 (Fiesta Nacional Española, recurring), 2017-11-01 to 2020-11-01 (Día de Todos los Santos, recurring), 2017-12-06 to 2020-12-06 (Día de la Constitución Española, recurring), 2017-12-08 to 2020-12-08 (Inmaculada Concepción, recurring), 2017-12-25 to 2020-12-25 (Natividad del Señor, recurring).

## Resources

| Resource | Rate |
| --- | --- |
| DIRECTOR PROYECTO | 60 |
| INGENIERO AGRONOMO | 48 |
| EXPERTO GIS | 47 |
| ECONOMISTA | 45 |
| SOCIOLOGO | 45 |
| INGENIERO EN MEDIOAMBIENTE | 45 |
| ADMINISTRATIVO | 30 |
| TECNICOS DE APOYO | 35 |

## Schedule

| ID | WBS | Task | Type | Duration | Start | Finish | Predecessors | Resources | Work | Cost |
| --- | --- | --- | --- | --- | --- | --- | --- | --- | --- | --- |
| 1 | 1 | **Total Proyecto** |  | 247d | 2017-02-20 | 2018-02-15 |  |  | 5001.6h | 229,191.2 |
| 2 | 1.1 | **FASE 1: PREPARACION PARA LA FORMULACION** |  | 37d | 2017-02-20 | 2017-04-12 |  |  | 520.8h | 24,811.2 |
| 3 | 1.1.1 | INICIO | milestone, manual | 0d | 2017-02-20 | 2017-02-20 |  | DIRECTOR PROYECTO |  |  |
| 4 | 1.1.2 | TERMINOS DE REFERENCIA. Objetivos. Condicionantes del Promotor | manual | 11d | 2017-02-20 | 2017-03-07 | 3 | DIRECTOR PROYECTO [50%]; ECONOMISTA [15%]; INGENIERO EN MEDIOAMBIENTE [5%]; INGENIERO AGRONOMO [15%] | 74.8h | 4,065.6 |
| 5 | 1.1.3 | FINANCIACION | manual | 6d | 2017-02-20 | 2017-03-01 | 3 | DIRECTOR PROYECTO [15%]; ECONOMISTA [20%]; SOCIOLOGO [20%]; INGENIERO AGRONOMO [15%] | 39.2h | 1,915.2 |
| 6 | 1.1.4 | COMITÉ DE COORDINACION. Constitución y organización | manual | 5d | 2017-02-20 | 2017-02-24 | 3 | DIRECTOR PROYECTO [25%] | 10h | 600 |
| 7 | 1.1.5 | EQUIPO DE FORMULACION. Recursos humanos y técnicos | manual | 16d | 2017-02-27 | 2017-03-21 | 4SS, 6 | DIRECTOR PROYECTO [25%]; ECONOMISTA [20%]; SOCIOLOGO [10%]; INGENIERO EN MEDIOAMBIENTE [10%]; INGENIERO AGRONOMO [10%]; ADMINISTRATIVO [10%] | 108.8h | 5,222.4 |
| 8 | 1.1.6 | METODOLOGIA Y PLAN DE TRABAJO | manual | 10d | 2017-03-22 | 2017-04-04 | 7, 5, 4, 6SS | INGENIERO AGRONOMO [10%]; DIRECTOR PROYECTO [50%]; ECONOMISTA [10%]; INGENIERO EN MEDIOAMBIENTE [50%]; ADMINISTRATIVO [50%]; SOCIOLOGO [50%] | 176h | 7,944 |
| 9 | 1.1.7 | DOC. Nº1: Fin P.F | manual | 5d | 2017-04-05 | 2017-04-11 | 8 | DIRECTOR PROYECTO [50%]; ECONOMISTA [50%]; SOCIOLOGO [20%]; INGENIERO EN MEDIOAMBIENTE [20%]; INGENIERO AGRONOMO [20%]; ADMINISTRATIVO [50%] | 84h | 3,804 |
| 10 | 1.1.8 | Entrega al PROMOTOR. Doc. nº1 | milestone, manual | 0d | 2017-04-12 | 2017-04-12 | 9 | DIRECTOR PROYECTO [50%] |  |  |
| 11 | 1.1.9 | SEMINARIO DE LANZAMIENTO DEL PROYECTO | manual | 1d | 2017-04-12 | 2017-04-12 | 10 | DIRECTOR PROYECTO [50%]; ECONOMISTA; SOCIOLOGO [50%]; INGENIERO EN MEDIOAMBIENTE; ADMINISTRATIVO [50%] | 28h | 1,260 |
| 12 | 1.2 | **FASE 2: ANALISIS Y DIAGNOSTICO** |  | 99d | 2017-04-12 | 2017-09-04 |  |  | 2478.4h | 112,784.8 |
| 13 | 1.2.1 | **ANALISIS ANTECEDENTES** |  | 19d | 2017-04-12 | 2017-05-11 | 11 |  | 280.8h | 13,017.6 |
| 14 | 1.2.1.1 | POLITICAS Y PROGRAMAS | manual | 12d | 2017-04-17 | 2017-05-03 | 11 | DIRECTOR PROYECTO [20%]; INGENIERO AGRONOMO [20%]; ECONOMISTA [40%]; ADMINISTRATIVO [20%]; INGENIERO EN MEDIOAMBIENTE [20%] | 115.2h | 5,241.6 |
| 15 | 1.2.1.2 | MARCO LEGAL | manual | 18d | 2017-04-17 | 2017-05-11 | 11 | DIRECTOR PROYECTO [20%]; INGENIERO AGRONOMO [10%]; ADMINISTRATIVO [20%]; ECONOMISTA [40%] | 129.6h | 5,875.2 |
| 16 | 1.2.1.3 | BASES DE DATOS EXISTENTES | manual | 9d | 2017-04-17 | 2017-04-27 | 11 | DIRECTOR PROYECTO [20%]; INGENIERO AGRONOMO [30%] | 36h | 1,900.8 |
| 17 | 1.2.2 | **ANALISIS DEL AREA DEL PROYECTO** |  | 80d | 2017-04-17 | 2017-08-07 | 11, 16 |  | 1237.2h | 54,162.4 |
| 18 | 1.2.2.1 | ANALISIS DE RECURSOS NATURALES. INVENTARIO AMBIENTAL | manual | 36d | 2017-02-20 | 2017-04-11 |  | INGENIERO EN MEDIOAMBIENTE [50%]; INGENIERO AGRONOMO [25%]; ECONOMISTA [40%]; ADMINISTRATIVO [20%]; EXPERTO GIS [50%] | 532.8h | 23,616 |
| 19 | 1.2.2.2 | INFRAESTRUCTURAS Y SERVICIOS | manual | 20d | 2017-04-17 | 2017-05-15 | 18 | DIRECTOR PROYECTO [10%]; ADMINISTRATIVO [25%]; INGENIERO AGRONOMO [25%]; SOCIOLOGO [25%] | 96h | 4,008 |
| 20 | 1.2.2.3 | ANALISIS DE SECTORES PRODUCTIVOS | manual | 25d | 2017-05-16 | 2017-06-19 | 14, 13, 15, 19 | DIRECTOR PROYECTO [20%]; ECONOMISTA [50%]; INGENIERO AGRONOMO [20%]; ADMINISTRATIVO [25%] | 230h | 10,320 |
| 21 | 1.2.2.4 | ANALISIS POBLACIONAL | manual | 22d | 2017-04-17 | 2017-05-17 |  | INGENIERO AGRONOMO [15%]; ADMINISTRATIVO [25%]; SOCIOLOGO [25%] | 114.4h | 4,567.2 |
| 22 | 1.2.2.5 | SISTEMA GENERAL TERRITORIAL DE INFORMACION | manual | 22d | 2017-04-28 | 2017-05-30 | 16 | INGENIERO AGRONOMO [15%]; ADMINISTRATIVO [25%]; EXPERTO GIS; SOCIOLOGO [10%] | 264h | 11,651.2 |
| 23 | 1.2.3 | **ANALISIS DE AGENTES Y PARTICIPACION** |  | 86d | 2017-05-03 | 2017-08-31 |  |  | 940.8h | 44,776.8 |
| 24 | 1.2.3.1 | IDENTIFICACIÓN DE AGENTES Y TIPOLOGIA | manual | 10d | 2017-05-08 | 2017-05-19 | 22SS+5d | DIRECTOR PROYECTO [50%]; INGENIERO AGRONOMO [25%]; ADMINISTRATIVO [25%]; SOCIOLOGO [15%] | 92h | 4,500 |
| 25 | 1.2.3.2 | ANALISIS DE LA PARTICIPACIÓN: ENCUESTA CON LOS AGENTES | manual | 60d | 2017-05-22 | 2017-08-11 | 24 | DIRECTOR PROYECTO [50%]; INGENIERO AGRONOMO [25%]; ADMINISTRATIVO [25%]; SOCIOLOGO [20%] | 576h | 28,080 |
| 26 | 1.2.3.3 | TALLER DE PARTICIPACIÓN AGENTES PUBLICOS | manual | 1d | 2017-06-05 | 2017-06-05 | 25SS+10d | INGENIERO AGRONOMO [50%]; ADMINISTRATIVO [50%]; DIRECTOR PROYECTO [15%]; SOCIOLOGO [20%] | 10.8h | 456 |
| 27 | 1.2.3.4 | ANALISIS PROSPECTIVO "SIN" | manual | 6d | 2017-06-06 | 2017-06-13 | 26 | INGENIERO AGRONOMO [25%]; ECONOMISTA [50%]; SOCIOLOGO [25%]; INGENIERO EN MEDIOAMBIENTE [25%]; DIRECTOR PROYECTO [15%] | 67.2h | 3,168 |
| 28 | 1.2.3.5 | INFORME DE PARTICIPACION: Problemas, necesidades, oportunidades | manual | 11d | 2017-08-14 | 2017-08-29 | 27, 25 | DIRECTOR PROYECTO [30%]; INGENIERO AGRONOMO [25%]; ECONOMISTA [50%]; SOCIOLOGO [25%]; INGENIERO EN MEDIOAMBIENTE [25%]; ADMINISTRATIVO [50%] | 180.4h | 7,920 |
| 29 | 1.2.3.6 | PRESENTACIÓN Y VALIDACION DE CONCLUSIONES | manual | 2d | 2017-08-30 | 2017-08-31 | 28 | DIRECTOR PROYECTO [25%]; INGENIERO AGRONOMO [10%]; ECONOMISTA [20%]; SOCIOLOGO [10%]; ADMINISTRATIVO [25%] | 14.4h | 652.8 |
| 30 | 1.2.4 | CONCLUSIONES Y Doc. Nº2. Presentación al PROMOTOR | manual | 1d | 2017-09-01 | 2017-09-01 | 29 | DIRECTOR PROYECTO [50%]; INGENIERO AGRONOMO [25%]; ADMINISTRATIVO; ECONOMISTA [50%]; INGENIERO EN MEDIOAMBIENTE [20%] | 19.6h | 828 |
| 31 | 1.2.5 | Doc. nº2. REVISIÓN POR EL PROMOTOR | milestone, manual | 0d | 2017-09-04 | 2017-09-04 | 29, 30 |  |  |  |

| ID | WBS | Task | Type | Duration | Start | Finish | Predecessors | Total slack | Resources | Work | Cost |
| --- | --- | --- | --- | --- | --- | --- | --- | --- | --- | --- | --- |
| 32 | 1.3 | **FASE 3: DISEÑO DEL PROYECTO** |  | 98d | 2017-09-04 | 2018-01-25 |  | 0d |  | 1236h | 57,396 |
| 33 | 1.3.1 | OBJETIVOS Y METAS | manual | 1d | 2017-09-04 | 2017-09-04 | 31 |  | DIRECTOR PROYECTO; INGENIERO AGRONOMO [50%] | 12h | 672 |
| 34 | 1.3.2 | ALTERNATIVA ESTRATEGICAS: ANÁLISIS Y SELECCIÓN | manual | 7d | 2017-09-05 | 2017-09-14 | 33 |  | DIRECTOR PROYECTO [50%]; INGENIERO AGRONOMO; ECONOMISTA; INGENIERO EN MEDIOAMBIENTE [50%] | 168h | 8,148 |
| 35 | 1.3.3 | FORMULACION DE LOS COMPONENTES | manual | 63d | 2017-09-15 | 2017-12-18 | 34 |  | INGENIERO AGRONOMO [50%]; ECONOMISTA [50%]; INGENIERO EN MEDIOAMBIENTE [50%] | 756h | 34,776 |
| 36 | 1.3.4 | DISEÑO DE LA ORGANIZACIÓN | manual | 12d | 2017-12-19 | 2018-01-04 | 35 |  | INGENIERO AGRONOMO [50%]; ECONOMISTA [50%]; INGENIERO EN MEDIOAMBIENTE [50%] | 144h | 6,624 |
| 37 | 1.3.5 | SISTEMA DE SEGUIMIENTO Y EVALUACION. Programación de la ejecución | manual | 8d | 2018-01-05 | 2018-01-16 | 36, 35 |  | INGENIERO AGRONOMO [50%]; ECONOMISTA [50%]; INGENIERO EN MEDIOAMBIENTE [50%] | 96h | 4,416 |
| 38 | 1.3.6 | PRESUPUESTACION | manual | 5d | 2018-01-05 | 2018-01-11 | 35, 36 |  | INGENIERO AGRONOMO [50%]; ECONOMISTA [50%]; INGENIERO EN MEDIOAMBIENTE [50%] | 60h | 2,760 |
| 39 | 1.3.7 | Doc. Nº 3. Entrega al PROMOTOR | milestone, manual | 0d | 2018-01-12 | 2018-01-12 | 38 |  | DIRECTOR PROYECTO |  |  |
| 40 | 1.3.8 | Doc. Nº 3. REVISION POR EL PROMOTOR | manual | 10d | 2018-01-12 | 2018-01-25 | 39 |  |  |  |  |
| 41 | 1.4 | **FASE 4: EVALUACION MULTICRITERIO** |  | 15d | 2018-01-26 | 2018-02-15 |  | 0d |  | 452h | 20,980 |
| 42 | 1.4.1 | EVALUACION ECONOMICO-FINANCIERA | manual | 10d | 2018-01-26 | 2018-02-08 | 40 |  | DIRECTOR PROYECTO [25%]; INGENIERO AGRONOMO [25%]; ECONOMISTA [20%] | 56h | 2,880 |
| 43 | 1.4.2 | EVALUACION SOCIAL Y CULTURAL | manual | 10d | 2018-01-26 | 2018-02-08 | 40 |  | DIRECTOR PROYECTO [25%]; INGENIERO AGRONOMO [25%]; ECONOMISTA [15%]; SOCIOLOGO | 132h | 6,300 |
| 44 | 1.4.3 | EVALUACION AMBIENTAL | manual | 10d | 2018-01-26 | 2018-02-08 | 40 |  | DIRECTOR PROYECTO [25%]; INGENIERO AGRONOMO [25%]; ECONOMISTA [15%]; INGENIERO EN MEDIOAMBIENTE | 132h | 6,300 |
| 45 | 1.4.4 | EVALUACION DE RIESGOS, SEGURIDAD Y SALUD DEL PROYECTO | manual | 10d | 2018-01-26 | 2018-02-08 | 40 |  | DIRECTOR PROYECTO [25%]; INGENIERO AGRONOMO [25%]; ECONOMISTA [15%]; TECNICOS DE APOYO | 132h | 5,500 |
| 46 | 1.4.5 | Entrega Doc. nº 4. VIABILIDAD Y SOSTENIBLIDAD | milestone, manual | 0d | 2018-02-09 | 2018-02-09 | 45 |  |  |  |  |
| 47 | 1.4.6 | Revisión Doc. nº 4 | manual | 5d | 2018-02-09 | 2018-02-15 | 42, 43, 44 |  |  |  |  |
| 48 | 1.5 | **FASE 5: DOCUMENTACION** |  | 10d | 2018-02-16 | 2018-03-05 |  | 0d |  | 314.4h | 13,219.2 |
| 49 | 1.5.1 | MEMORIA | manual | 6d | 2018-02-16 | 2018-02-23 | 47 |  | INGENIERO AGRONOMO [15%]; ECONOMISTA [15%]; DIRECTOR PROYECTO [10%]; TECNICOS DE APOYO [15%] | 26.4h | 1,209.6 |
| 50 | 1.5.2 | ANEJOS A LA MEMORIA | manual | 10d | 2018-02-16 | 2018-03-02 | 47 |  | INGENIERO AGRONOMO [15%]; ECONOMISTA [15%]; DIRECTOR PROYECTO [10%]; INGENIERO EN MEDIOAMBIENTE [15%]; ADMINISTRATIVO [15%]; TECNICOS DE APOYO [30%] | 80h | 3,336 |
| 51 | 1.5.3 | PLANOS | manual | 10d | 2018-02-16 | 2018-03-02 | 47 |  | INGENIERO AGRONOMO [15%]; ECONOMISTA [15%]; DIRECTOR PROYECTO [10%]; INGENIERO EN MEDIOAMBIENTE [15%]; ADMINISTRATIVO [15%]; TECNICOS DE APOYO [30%] | 80h | 3,336 |
| 52 | 1.5.4 | PLIEGO DE CONDICIONES | manual | 3d | 2018-02-16 | 2018-02-20 | 47 |  | INGENIERO AGRONOMO [15%]; ECONOMISTA [15%]; DIRECTOR PROYECTO [10%]; INGENIERO EN MEDIOAMBIENTE [15%]; ADMINISTRATIVO [15%]; TECNICOS DE APOYO [30%] | 24h | 1,000.8 |
| 53 | 1.5.5 | PRESUPUESTO | manual | 3d | 2018-02-16 | 2018-02-20 | 47 |  | ECONOMISTA [15%]; INGENIERO AGRONOMO [15%]; DIRECTOR PROYECTO [10%]; INGENIERO EN MEDIOAMBIENTE [15%]; ADMINISTRATIVO [15%]; TECNICOS DE APOYO [30%] | 24h | 1,000.8 |
| 54 | 1.5.6 | ESTUDIO DE SEGURIDAD Y SALUD | manual | 10d | 2018-02-16 | 2018-03-02 | 47 |  | INGENIERO AGRONOMO [15%]; ECONOMISTA [15%]; DIRECTOR PROYECTO [10%]; INGENIERO EN MEDIOAMBIENTE [15%]; ADMINISTRATIVO [15%]; TECNICOS DE APOYO [30%] | 80h | 3,336 |
| 55 | 1.5.7 | Entrega del proyecto | milestone, manual | 0d | 2018-03-05 | 2018-03-05 | 54, 49, 50, 51, 52, 53 |  |  |  |  |
